# nibKame

Schedule from GanttProject, 2010-10-11 to 2011-01-17.
GuNCT

## Calendars

- Project calendar: Mon-Fri working; Sat-Sun off.

## Resources

| Resource | Group |
| --- | --- |
| 小堀育男 | プロジェクトマネージャー・デザイナー・コーダー・レビュワー・ドキュメンター・テスター |
| 酒本典明 | プロジェクトマネージャー・デザイナー・コーダー・レビュワー・ドキュメンター・テスター |

## Schedule

| ID | Task | Type | Duration | Start | Finish | Predecessors | Complete | Resources |
| --- | --- | --- | --- | --- | --- | --- | --- | --- |
| 1 | 言語仕様策定 |  | 18d | 2010-10-11 | 2010-11-03 |  | 80% | 小堀育男 [50%]; 酒本典明 [50%] |
| 2 | S式リーダモジュールの作成 |  | 18d | 2010-10-11 | 2010-11-03 |  | 90% | 小堀育男 [30%] |
| 3 | S式表現の仕様策定 |  | 18d | 2010-10-11 | 2010-11-03 |  | 80% | 酒本典明 [50%] |
| 4 | S式→中間言語への変換部の作成 |  | 5d | 2010-11-04 | 2010-11-10 | 2, 3 |  | 酒本典明 |
| 5 | 型推論部の作成 |  | 5d | 2010-11-11 | 2010-11-17 | 4 |  | 小堀育男 |
| 6 | 正規化部の作成 |  | 9d | 2010-11-04 | 2010-11-16 | 1 |  | 酒本典明 |
| 7 | 最適化部の作成 |  | 10d | 2010-11-17 | 2010-11-30 | 6 |  | 酒本典明 |
| 8 | 仮想機械語への変換部の作成 |  | 5d | 2010-11-17 | 2010-11-23 | 6 |  | 酒本典明 |
| 9 | 仮想機械語最適化部の作成 |  | 5d | 2010-11-24 | 2010-11-30 | 8 |  | 小堀育男 |
| 10 | 基本部分完成 | milestone | 0d | 2010-11-24 | 2010-11-24 | 1, 4, 5, 8 |  |  |
| 11 | 基本仕様のデバッグ |  | 10d | 2010-11-25 | 2010-12-08 | 10 |  | 小堀育男; 酒本典明 |
| 12 | 標準ライブラリの作成 |  | 13d | 2010-10-22 | 2010-11-09 | 1SS | 13% | 小堀育男; 酒本典明 |
| 13 | FFIの作成 |  | 10d | 2010-11-25 | 2010-12-08 | 10 |  | 小堀育男 |
| 14 | 構文木変換部の作成 |  | 5d | 2010-12-09 | 2010-12-15 |  |  | 酒本典明 |
| 15 | 字句・構文解析部の作成 |  | 5d | 2010-12-09 | 2010-12-15 |  |  | 小堀育男 |
| 16 | 目標達成 | milestone | 0d | 2010-12-16 | 2010-12-16 | 10, 11, 12, 13, 14, 15 |  |  |
| 17 | 全体的なデバッグ |  | 22d | 2010-12-16 | 2011-01-14 | 10, 12, 13, 14, 15 |  | 小堀育男; 酒本典明 |
| 18 | GCの作成 |  | 22d | 2010-12-16 | 2011-01-14 |  |  | 小堀育男; 酒本典明 |
| 19 | 完成 | milestone | 0d | 2011-01-17 | 2011-01-17 | 17, 18 |  |  |
